# 简单项目计划

Schedule from MS Project, 2020-11-02 to 2020-12-15.

## Calendars

- Standard: Mon-Fri 08:00-12:00, 13:00-17:00; Sat-Sun off. Exceptions (off unless hours are given): 2020-11-22 08:00-12:00, 13:00-17:00.

## Resources

| Resource |
| --- |
| 何佳 |
| 付静怡 |
| 李雨竹 |
| 李晓涵 |
| 解宇欣 |

## Schedule

| ID | WBS | Task | Type | Duration | Start | Finish | Predecessors | Resources | Work |
| --- | --- | --- | --- | --- | --- | --- | --- | --- | --- |
| 1 | 1 | **启动** |  | 6d | 2020-11-02 | 2020-11-08 |  |  | 96h |
| 2 | 1.1 | 组建核心团队 | manual | 2d | 2020-11-02 | 2020-11-03 |  | 何佳 | 16h |
| 3 | 1.2 | 干系人分析 | manual | 1d | 2020-11-04 | 2020-11-04 | 2 | 何佳 | 8h |
| 4 | 1.3 | 里程碑计划 | manual | 2d | 2020-11-05 | 2020-11-06 | 2, 3 | 付静怡 | 16h |
| 5 | 1.4 | 制定项目章程 | manual | 2d | 2020-11-05 | 2020-11-06 | 2, 3 | 李雨竹 | 16h |
| 6 | 1.5 | 项目启动大会 | manual | 1d | 2020-11-08 | 2020-11-08 |  | 付静怡; 何佳; 解宇欣; 李晓涵; 李雨竹 | 40h |
| 7 | 2 | **规划** |  | 28d | 2020-11-09 | 2020-12-15 |  |  | 272h |
| 8 | 2.1 | **规划范围** |  | 28d | 2020-11-09 | 2020-12-15 |  |  | 272h |
| 9 | 2.1.1 | **框架Selenium完善** |  | 2d | 2020-11-09 | 2020-11-10 |  | 付静怡; 何佳; 解宇欣; 李晓涵; 李雨竹 | 80h |
| 10 | 2.1.1.1 | 完善框架 | manual | 2d | 2020-11-09 | 2020-11-10 |  |  |  |
| 11 | 2.1.2 | **美化测试报告** |  | 3d | 2020-11-11 | 2020-11-13 |  |  | 96h |
| 12 | 2.1.2.1 | ReportNG美化测试 | manual | 2d | 2020-11-11 | 2020-11-12 |  | 何佳; 李晓涵 | 32h |
| 13 | 2.1.2.2 | Freemarker+Selenium+TestNG | manual | 3d | 2020-11-11 | 2020-11-13 |  | 付静怡; 解宇欣 | 48h |
| 14 | 2.1.2.3 | testng-xslt | manual | 2d | 2020-11-11 | 2020-11-12 |  | 李雨竹 | 16h |
| 15 | 2.1.3 | **手工测试** |  | 14d | 2020-11-09 | 2020-11-25 |  |  | 96h |
| 16 | 2.1.3.1 | 测试计划 | manual | 2d | 2020-11-09 | 2020-11-10 |  |  |  |
| 17 | 2.1.3.2 | **黑盒测试** |  | 8d | 2020-11-11 | 2020-11-20 | 16 |  | 96h |
| 18 | 2.1.3.2.1 | **前台** |  | 2d | 2020-11-11 | 2020-11-12 |  |  | 40h |
| 19 | 2.1.3.2.1.1 | 附近职位 | manual | 1d | 2020-11-11 | 2020-11-11 |  | 何佳 | 8h |
| 20 | 2.1.3.2.1.2 | 普工专区 | manual | 1d | 2020-11-11 | 2020-11-11 |  | 何佳 | 8h |
| 21 | 2.1.3.2.1.3 | 兼职职位 | manual | 1d | 2020-11-12 | 2020-11-12 |  | 何佳 | 8h |
| 22 | 2.1.3.2.1.4 | HR工具箱 | manual | 1d | 2020-11-12 | 2020-11-12 |  | 何佳 | 8h |
| 23 | 2.1.3.2.1.5 | 找企业 | manual | 1d | 2020-11-12 | 2020-11-12 |  | 何佳 | 8h |
| 24 | 2.1.3.2.2 | **后台** |  | 5d | 2020-11-16 | 2020-11-20 |  |  | 56h |
| 25 | 2.1.3.2.2.1 | 运营-商城 | manual | 1d | 2020-11-13 | 2020-11-13 |  | 何佳 | 8h |
| 26 | 2.1.3.2.2.2 | 运营-广告 | manual | 1d | 2020-11-13 | 2020-11-13 |  | 何佳 | 8h |
| 27 | 2.1.3.2.2.3 | 运营-财务 | manual | 1d | 2020-11-15 | 2020-11-15 |  | 何佳 | 8h |
| 28 | 2.1.3.2.2.4 | 运营-专题 | manual | 1d | 2020-11-16 | 2020-11-16 |  | 何佳 | 8h |
| 29 | 2.1.3.2.2.5 | 运营-举报 | manual | 1d | 2020-11-18 | 2020-11-18 |  | 何佳 | 8h |
| 30 | 2.1.3.2.2.6 | 运营-营销 | manual | 1d | 2020-11-18 | 2020-11-18 |  | 何佳 | 8h |
| 31 | 2.1.3.2.2.7 | 首页界面 | manual | 1d | 2020-11-20 | 2020-11-20 |  | 何佳 | 8h |

Notes:
- 1: 这是摘要任务。使用摘要任务以帮助您在节中组织项目。
- 4: 这是里程碑任务。将任务工期设置为 0d 以标记项目中的事件。

| ID | WBS | Task | Type | Duration | Start | Finish | Predecessors | Total slack | Constraint |
| --- | --- | --- | --- | --- | --- | --- | --- | --- | --- |
| 32 | 2.1.3.3 | **探索性测试** |  | 3d | 2020-11-21 | 2020-11-23 | 16 |  |  |
| 33 | 2.1.3.3.1 | **前台** |  | 1d? | 2020-11-21 | 2020-11-21 |  |  |  |
| 34 | 2.1.3.3.1.1 | 附近职位 | manual | 1d | 2020-11-21 | 2020-11-21 |  |  |  |
| 35 | 2.1.3.3.1.2 | 普工专区 | manual | 1d | 2020-11-21 | 2020-11-21 |  |  |  |
| 36 | 2.1.3.3.1.3 | 兼职职位 | manual | 1d | 2020-11-21 | 2020-11-21 |  |  |  |
| 37 | 2.1.3.3.1.4 | HR工具箱 | manual | 1d | 2020-11-21 | 2020-11-21 |  |  |  |
| 38 | 2.1.3.3.1.5 | 找企业 | manual | 1d | 2020-11-21 | 2020-11-21 |  |  |  |
| 39 | 2.1.3.3.2 | **后台** |  | 2d | 2020-11-22 | 2020-11-23 |  |  |  |
| 40 | 2.1.3.3.2.1 | 运营-商城 | manual | 1d | 2020-11-22 | 2020-11-22 |  |  |  |
| 41 | 2.1.3.3.2.2 | 运营-广告 | manual | 1d | 2020-11-22 | 2020-11-22 |  |  |  |
| 42 | 2.1.3.3.2.3 | 运营-财务 |  | 1d | 2020-11-22 | 2020-11-22 |  | 17d | start no earlier than 2020-11-22 |
| 43 | 2.1.3.3.2.4 | 运营-专题 |  | 1d | 2020-11-23 | 2020-11-23 |  | 16d | finish no earlier than 2020-11-23 |
| 44 | 2.1.3.3.2.5 | 运营-举报 |  | 1d | 2020-11-23 | 2020-11-23 |  | 16d | finish no earlier than 2020-11-23 |
| 45 | 2.1.3.3.2.6 | 运营-营销 |  | 1d | 2020-11-23 | 2020-11-23 |  | 16d | finish no earlier than 2020-11-23 |
| 46 | 2.1.3.3.2.7 | 首页界面 |  | 1d | 2020-11-23 | 2020-11-23 |  | 16d | finish no earlier than 2020-11-23 |
| 47 | 2.1.3.4 | 测试报告 | manual | 1d | 2020-11-25 | 2020-11-25 | 17, 32 |  |  |
| 48 | 2.1.4 | **Jenkins学习** |  | 17d | 2020-11-16 | 2020-12-06 |  |  |  |
| 49 | 2.1.4.1 | **自动化测试** |  | 12d | 2020-11-16 | 2020-11-29 |  |  |  |
| 50 | 2.1.4.1.1 | 冒烟测试用例编写 | manual | 2d | 2020-11-16 | 2020-11-17 |  |  |  |
| 51 | 2.1.4.1.2 | **代码实现用例** |  | 3d | 2020-11-18 | 2020-11-20 | 50 |  |  |
| 52 | 2.1.4.1.2.1 | 前台 | manual | 1d | 2020-11-18 | 2020-11-18 |  |  |  |
| 53 | 2.1.4.1.2.2 | 后台 | manual | 2d | 2020-11-19 | 2020-11-20 |  |  |  |
| 54 | 2.1.4.1.3 | **实现Excel数据驱动** |  | 3d | 2020-11-23 | 2020-11-25 | 51 |  |  |
| 55 | 2.1.4.1.3.1 | 前台 | manual | 1d | 2020-11-23 | 2020-11-23 |  |  |  |
| 56 | 2.1.4.1.3.2 | 后台 | manual | 1d | 2020-11-25 | 2020-11-25 |  |  |  |

| ID | WBS | Task | Type | Duration | Start | Finish | Predecessors | Total slack |
| --- | --- | --- | --- | --- | --- | --- | --- | --- |
| 57 | 2.1.4.1.4 | **用例整合运行** |  | 3d | 2020-11-26 | 2020-11-29 | 51, 54 |  |
| 58 | 2.1.4.1.4.1 | 前台 | manual | 2d | 2020-11-26 | 2020-11-27 |  |  |
| 59 | 2.1.4.1.4.2 | 后台 | manual | 1d | 2020-11-29 | 2020-11-29 |  |  |
| 60 | 2.1.4.2 | 服务器搭建 | manual | 2d | 2020-12-02 | 2020-12-03 |  |  |
| 61 | 2.1.4.3 | 实现持续性集成 | manual | 2d | 2020-12-04 | 2020-12-05 | 49, 60 |  |
| 62 | 2.1.5 | **渗透测试** |  | 11d | 2020-11-30 | 2020-12-14 |  |  |
| 63 | 2.1.5.1 | 下载安装bluecms_1.6 | manual | 1d | 2020-11-30 | 2020-11-30 |  |  |
| 64 | 2.1.5.2 | 信息收集 | manual | 1d | 2020-12-02 | 2020-12-02 |  |  |
| 65 | 2.1.5.3 | 利用burpsuit进行漏洞扫描 | manual | 3d | 2020-12-03 | 2020-12-05 |  |  |
| 66 | 2.1.5.4 | 爬取网站 | manual | 2d | 2020-12-06 | 2020-12-07 |  |  |
| 67 | 2.1.5.5 | 自动化攻击 | manual | 2d | 2020-12-08 | 2020-12-09 |  |  |
| 68 | 2.1.5.6 | 对网站进行手工测试 | manual | 3d | 2020-12-10 | 2020-12-12 |  |  |
| 69 | 2.1.5.7 | 发现漏洞 | manual | 1d | 2020-12-14 | 2020-12-14 |  |  |
| 70 | 2.1.6 | **接口测试** |  | 6d | 2020-12-07 | 2020-12-14 |  |  |
| 71 | 2.1.6.1 | <新任务> | manual | 1d? | 2020-12-07 | 2020-12-07 |  |  |
| 72 | 3 | **下面的注释掉** |  | 1d | 2020-11-17 | 2020-11-17 |  | 0d |
| 73 | 3.1 | **规划成本** |  | 1d | 2020-11-17 | 2020-11-17 |  |  |
| 74 | 3.1.1 | 项目成本估算 | manual | 1d | 2020-11-17 | 2020-11-17 |  |  |
| 75 | 3.1.2 | 项目预算 | milestone, manual | 0d | 2020-11-17 | 2020-11-17 |  |  |
| 76 | 3.1.3 | 形成范围基准 | manual | 1d? | 2020-11-17 | 2020-11-17 |  |  |
| 77 | 3.2 | **规划质量** |  | 1d | 2020-11-17 | 2020-11-17 |  |  |
| 78 | 3.2.1 | 制定测试计划 | manual | 1d? | 2020-11-17 | 2020-11-17 |  |  |
| 79 | 3.2.2 | 制定测试用例 | manual | 1d | 2020-11-17 | 2020-11-17 |  |  |
| 80 | 3.3 | **规划人力资源** |  | 1d | 2020-11-17 | 2020-11-17 |  |  |
| 81 | 3.3.1 | 制定人力资源计划 | manual | 1d | 2020-11-17 | 2020-11-17 |  |  |
| 82 | 3.3.2 | 制定人员配备管理计划 | manual | 1d? | 2020-11-17 | 2020-11-17 |  |  |

| ID | WBS | Task | Type | Duration | Start | Finish |
| --- | --- | --- | --- | --- | --- | --- |
| 83 | 3.4 | **规划沟通** |  | 1d | 2020-11-17 | 2020-11-17 |
| 84 | 3.4.1 | 制定沟通管理计划 | manual | 1d | 2020-11-17 | 2020-11-17 |
| 85 | 3.5 | **规划采购** |  | 1d | 2020-11-17 | 2020-11-17 |
| 86 | 3.5.1 | 自制外购分析 | manual | 1d | 2020-11-17 | 2020-11-17 |
| 87 | 3.5.2 | 制定采购文件 | manual | 1d? | 2020-11-17 | 2020-11-17 |
| 88 | 3.6 | **规划风险** |  | 1d | 2020-11-17 | 2020-11-17 |
| 89 | 3.6.1 | 识别风险 | manual | 1d? | 2020-11-17 | 2020-11-17 |
| 90 | 3.6.2 | 风险分析 | manual | 1d? | 2020-11-17 | 2020-11-17 |
| 91 | 3.6.3 | 制定风险登记册 | manual | 1d | 2020-11-17 | 2020-11-17 |
| 92 | 3.6.4 | 规划整合 | manual | 1d? | 2020-11-17 | 2020-11-17 |
